# 项目任务分解

How a schedule from MS Project changed from version to version. A marks actual dates.

## Version 1 (saved 2026-09-14, file 项目任务分解.mpp)

Note of the change: chore: 将Project工程文件归档到任务4目录并更新README

| ID | WBS | Task | Duration | Start | Finish | Predecessors | Total float | Constraint |
| --- | --- | --- | --- | --- | --- | --- | --- | --- |
| 1 | 1 | **项目启动与规划** | 4d | 2026-09-03 | 2026-09-08 |  | 0d |  |
| 2 |  | 项目立项、章程与分工 | 2d | 2026-09-03 | 2026-09-04 |  |  |  |
| 3 |  | 开发环境与工具准备 | 2d | 2026-09-03 | 2026-09-04 |  |  |  |
| 4 |  | 项目介绍与参考资料整理 | 2d | 2026-09-07 | 2026-09-08 | 2 |  |  |
| 5 | 2 | **需求与设计** | 8d | 2026-09-09 | 2026-09-18 |  | 0d |  |
| 6 |  | 需求调查与需求建模 | 3d | 2026-09-09 | 2026-09-11 | 4 |  |  |
| 7 |  | 需求规格说明书撰写 | 4d | 2026-09-14 | 2026-09-17 | 6 |  |  |
| 8 |  | 系统设计文档撰写 | 5d | 2026-09-14 | 2026-09-18 | 6 |  |  |
| 9 | 3 | **系统开发** | 13d | 2026-09-07 | 2026-09-23 |  | 0d |  |
| 10 |  | 前端基础页面开发 | 6d | 2026-09-07 | 2026-09-13 | 2 |  |  |
| 11 |  | 后端检测闭环（视频源/检测任务/告警/接口） | 5d | 2026-09-14 | 2026-09-18 | 10 |  |  |
| 12 |  | 前后端联调与实时画面上线 | 3d | 2026-09-21 | 2026-09-23 | 11 |  |  |
| 13 | 4 | **数据与模型** | 23d? | 2026-09-08 | 2026-10-08 |  | 0d |  |
| 14 |  | 数据集获取与质量体检 | 3d? | 2026-09-08 | 2026-09-10 | 3 | 10d | finish no earlier than 2026-09-10 |
| 15 |  | 首轮模型训练与评测 | 3d | 2026-09-11 | 2026-09-15 | 14 |  |  |
| 16 |  | 数据清洗与防泄漏重划分 | 4d | 2026-09-11 | 2026-09-16 | 14 |  |  |
| 17 |  | 烟雾与远距离类数据集补充 | 11d | 2026-09-17 | 2026-10-01 | 16 |  |  |
| 18 |  | 数据重训与现有模型评对比测 | 5d | 2026-10-02 | 2026-10-08 | 17 |  |  |
| 19 | 5 | **智能体与远距离识别** | 11d | 2026-10-09 | 2026-10-23 |  | 0d |  |
| 20 |  | 切片推理与多尺度检测 | 5d | 2026-10-09 | 2026-10-15 | 18 |  |  |
| 21 |  | 智能体复核 | 5d | 2026-10-16 | 2026-10-22 | 20 |  |  |
| 22 |  | 远景测试与误报评估 | 5d | 2026-10-19 | 2026-10-23 |  |  |  |
| 23 | 6 | **测试与验收** | 25d | 2026-09-24 | 2026-10-28 |  | 0d |  |
| 24 |  | 功能测试与缺陷记录 | 2d | 2026-09-24 | 2026-09-25 | 12 |  |  |
| 25 |  | 缺陷修复与回归测试 | 3d | 2026-09-28 | 2026-09-30 | 24 |  |  |
| 26 |  | 误报与可靠性测试 | 3d | 2026-10-26 | 2026-10-28 |  |  |  |
| 27 | 7 | **演示与结项** | 6d | 2026-10-29 | 2026-11-05 |  | 0d |  |
| 28 |  | 手机推流实测与演示 | 3d | 2026-10-29 | 2026-11-02 | 25, 26 |  |  |
| 29 |  | 结项报告与材料归档 | 2d | 2026-11-04 | 2026-11-05 |  |  |  |
| 30 | 8 | **项目里程碑** | 35d | 2026-09-18 | 2026-11-06 |  | 0d |  |
| 31 |  | 需求规格说明书定稿 | 0d | 2026-09-18 | 2026-09-18 | 7 |  |  |
| 32 |  | 系统核心闭环完成 | 0d | 2026-09-24 | 2026-09-24 | 12 |  |  |
| 33 |  | 数据治理与模型重训完成 | 0d | 2026-10-09 | 2026-10-09 | 18 |  |  |
| 34 |  | 智能体与远距离识别完成 | 0d | 2026-10-26 | 2026-10-26 | 22 |  |  |
| 35 |  | 项目结项演示 | 0d | 2026-11-06 | 2026-11-06 | 29 |  |  |

## Version 2 (saved 2026-09-17, file 项目任务分解.mpp)

Note of the change: docs: 归档成员提交的远距离林区烟雾数据集候选评估

Last finish stays 2026-11-06.

Changed:

| ID | Task | Start | Duration | Total float | Other |
| --- | --- | --- | --- | --- | --- |
| 18 | 数据重训与现有模型对比评测 |  |  |  | was named 数据重训与现有模型评对比测 |
| 30 | **项目里程碑** | 2026-09-18 → 2026-09-03 (-15d) | 35d → 47d | 0d → none |  |

## Version 3 (data date 2026-09-24, saved 2026-09-24, file 项目任务分解_全周期预设.mpp)

Note of the change: fix(实验5): 清除残留的空白资源、任务8改为四人协作、修正质量模板来源说明 - 蔡俊杰

Last finish stays 2026-11-06. Complete tasks 0 → 22.

Changed:

| ID | Task | Start | Finish | Duration | Complete | Total float | Other |
| --- | --- | --- | --- | --- | --- | --- | --- |
| 1 | **项目启动与规划** | 2026-09-03 A | 2026-09-08 → 2026-09-10 A (+2d) | 4d → 6d | 0% → 100% | 0d → none | baseline start none → 2026-09-03; baseline finish none → 2026-09-08 |
| 2 | 项目立项、章程与分工 | 2026-09-03 A | 2026-09-04 → 2026-09-09 A (+5d) | 2d → 6d | 0% → 100% |  | resources 蔡俊杰; 李汶航 → 蔡俊杰 [25%]; 李汶航 [25%]; baseline start none → 2026-09-03; baseline finish none → 2026-09-04 |
| 3 | 开发环境与工具准备 | 2026-09-03 A | 2026-09-04 → 2026-09-08 A (+4d) | 2d → 5d | 0% → 100% |  | resources 蔡俊杰; 陈泽恩 → 蔡俊杰 [25%]; 陈泽恩 [25%]; baseline start none → 2026-09-03; baseline finish none → 2026-09-04 |
| 4 | 项目介绍与参考资料整理 | 2026-09-07 A | 2026-09-08 → 2026-09-10 A (+2d) | 2d → 5d | 0% → 100% |  | resources 蔡俊杰; 李汶航 → 蔡俊杰 [25%]; 李汶航 [25%]; baseline start none → 2026-09-07; baseline finish none → 2026-09-08 |
| 5 | **需求与设计** | 2026-09-09 A | 2026-09-18 → 2026-09-17 A (-1d) | 8d → 7d | 0% → 100% | 0d → none | baseline start none → 2026-09-09; baseline finish none → 2026-09-18 |
| 6 | 需求调查与需求建模 | 2026-09-09 A | 2026-09-11 → 2026-09-15 A (+4d) | 3d → 6d | 0% → 100% |  | resources 蔡俊杰; 欧阳宇康 → 蔡俊杰 [25%]; 欧阳宇康 [25%]; baseline start none → 2026-09-09; baseline finish none → 2026-09-11 |
| 7 | 需求规格说明书撰写 | 2026-09-14 → 2026-09-10 A (-4d) | 2026-09-17 → 2026-09-14 A (-3d) |  | 0% → 100% |  | resources 全员 → 蔡俊杰 [25%]; 李汶航 [25%]; 欧阳宇康 [25%]; 陈泽恩 [25%]; baseline start none → 2026-09-14; baseline finish none → 2026-09-17 |
| 8 | 系统设计文档撰写 | 2026-09-14 → 2026-09-15 A (+1d) | 2026-09-18 → 2026-09-17 A (-1d) | 5d → 4d | 0% → 100% |  | resources 蔡俊杰 → 蔡俊杰 [25%]; 李汶航 [25%]; 欧阳宇康 [25%]; 陈泽恩 [25%]; baseline start none → 2026-09-14; baseline finish none → 2026-09-18 |
| 9 | **系统开发** | 2026-09-07 A | 2026-09-23 → 2026-09-22 A (-1d) | 13d → 12d | 0% → 100% | 0d → none | baseline start none → 2026-09-07; baseline finish none → 2026-09-23 |
| 10 | 前端基础页面开发 | 2026-09-07 A | 2026-09-13 → 2026-09-11 A (-2d) |  | 0% → 100% |  | resources 李汶航 → 李汶航 [25%]; baseline start none → 2026-09-07; baseline finish none → 2026-09-13 |
| 11 | 后端检测闭环（视频源/检测任务/告警/接口） | 2026-09-14 A | 2026-09-18 A | 5d → 6d | 0% → 100% |  | resources 蔡俊杰; 欧阳宇康 → 蔡俊杰 [25%]; 欧阳宇康 [25%]; baseline start none → 2026-09-14; baseline finish none → 2026-09-18 |
| 12 | 前后端联调与实时画面上线 | 2026-09-21 → 2026-09-18 A (-3d) | 2026-09-23 → 2026-09-22 A (-1d) | 3d → 4d | 0% → 100% |  | resources 蔡俊杰; 李汶航 → 蔡俊杰 [25%]; 李汶航 [25%]; baseline start none → 2026-09-21; baseline finish none → 2026-09-23 |
| 13 | **数据与模型** | 2026-09-08 A | 2026-10-08 → 2026-10-16 A (+8d) | 23d? → 29d? | 0% → 100% | 0d → none | baseline start none → 2026-09-07; baseline finish none → 2026-10-08 |
| 14 | 数据集获取与质量体检 | 2026-09-08 A | 2026-09-10 → 2026-09-12 A (+2d) |  | 0% → 100% | 11d → none | resources 陈泽恩; 欧阳宇康 → 陈泽恩 [25%]; 欧阳宇康 [25%]; baseline start none → 2026-09-07; baseline finish none → 2026-09-22 |
| 15 | 首轮模型训练与评测 | 2026-09-11 → 2026-09-09 A (-2d) | 2026-09-15 → 2026-09-11 A (-4d) | 3d → 4d | 0% → 100% |  | resources 蔡俊杰 → 蔡俊杰 [25%]; baseline start none → 2026-09-11; baseline finish none → 2026-09-15 |
| 16 | 数据清洗与防泄漏重划分 | 2026-09-11 → 2026-09-21 A (+10d) | 2026-09-16 → 2026-09-28 A (+12d) | 4d → 7d | 0% → 100% |  | resources 蔡俊杰; 陈泽恩 → 蔡俊杰 [25%]; 陈泽恩 [25%]; baseline start none → 2026-09-11; baseline finish none → 2026-09-16 |
| 17 | 烟雾与远距离类数据集补充 | 2026-09-17 → 2026-09-24 A (+7d) | 2026-10-01 → 2026-10-08 A (+7d) | 11d → 12d | 0% → 100% |  | resources 陈泽恩; 李汶航; 欧阳宇康 → 陈泽恩 [25%]; 李汶航 [25%]; 欧阳宇康 [25%]; baseline start none → 2026-09-17; baseline finish none → 2026-10-01 |
| 18 | 数据重训与现有模型对比评测 | 2026-10-02 → 2026-10-09 A (+7d) | 2026-10-08 → 2026-10-16 A (+8d) | 5d → 7d | 0% → 100% |  | resources 蔡俊杰 → 蔡俊杰 [25%]; baseline start none → 2026-10-02; baseline finish none → 2026-10-08 |
| 19 | **智能体与远距离识别** | 2026-10-09 → 2026-10-19 A (+10d) | 2026-10-23 → 2026-11-02 A (+10d) |  | 0% → 100% | 0d → none | baseline start none → 2026-10-09; baseline finish none → 2026-10-23 |
| 20 | 切片推理与多尺度检测 | 2026-10-09 → 2026-10-19 A (+10d) | 2026-10-15 → 2026-10-23 A (+8d) | 5d → 6d | 0% → 100% |  | resources 蔡俊杰 → 蔡俊杰 [25%]; baseline start none → 2026-10-09; baseline finish none → 2026-10-15 |
| 21 | 智能体复核 | 2026-10-16 → 2026-10-26 A (+10d) | 2026-10-22 → 2026-10-29 A (+7d) |  | 0% → 100% |  | resources 蔡俊杰; 李汶航 → 蔡俊杰 [25%]; 李汶航 [25%]; baseline start none → 2026-10-16; baseline finish none → 2026-10-22 |
| 22 | 远景测试与误报评估 | 2026-10-19 → 2026-10-29 A (+10d) | 2026-10-23 → 2026-11-02 A (+10d) | 5d → 4d | 0% → 100% |  | resources 陈泽恩; 欧阳宇康 → 陈泽恩 [25%]; 欧阳宇康 [25%]; baseline start none → 2026-10-19; baseline finish none → 2026-10-23 |
| 23 | **测试与验收** | 2026-09-24 → 2026-09-23 A (-1d) | 2026-10-28 → 2026-11-02 A (+5d) | 25d → 29d | 0% → 100% | 0d → none | baseline start none → 2026-09-24; baseline finish none → 2026-10-28 |
| 24 | 功能测试与缺陷记录 | 2026-09-24 → 2026-09-23 A (-1d) | 2026-09-25 A | 2d → 4d | 0% → 100% |  | resources 欧阳宇康 → 欧阳宇康 [25%]; baseline start none → 2026-09-24; baseline finish none → 2026-09-25 |
| 25 | 缺陷修复与回归测试 | 2026-09-28 → 2026-09-29 A (+1d) | 2026-09-30 → 2026-10-09 A (+9d) | 3d → 10d | 0% → 100% |  | resources 李汶航; 蔡俊杰 → 李汶航 [25%]; 蔡俊杰 [25%]; baseline start none → 2026-09-28; baseline finish none → 2026-09-30 |
| 26 | 误报与可靠性测试 | 2026-10-26 → 2026-10-28 A (+2d) | 2026-10-28 → 2026-11-02 A (+5d) | 3d → 5d | 0% → 100% |  | resources 陈泽恩; 欧阳宇康 → 陈泽恩 [25%]; 欧阳宇康 [25%]; baseline start none → 2026-10-26; baseline finish none → 2026-10-28 |
| 27 | **演示与结项** | 2026-10-29 → 2026-10-30 A (+1d) | 2026-11-05 A | 6d → 5d | 0% → 100% | 0d → none | baseline start none → 2026-10-29; baseline finish none → 2026-11-05 |
| 28 | 手机推流实测与演示 | 2026-10-29 → 2026-10-30 A (+1d) | 2026-11-02 → 2026-11-03 A (+1d) | 3d → 4d | 0% → 100% |  | resources 蔡俊杰; 李汶航 → 蔡俊杰 [25%]; 李汶航 [25%]; baseline start none → 2026-10-29; baseline finish none → 2026-11-02 |
| 29 | 结项报告与材料归档 | 2026-11-04 → 2026-11-03 A (-1d) | 2026-11-05 A | 2d → 4d | 0% → 100% |  | resources 全员 → 蔡俊杰 [25%]; 李汶航 [25%]; 欧阳宇康 [25%]; 陈泽恩 [25%]; baseline start none → 2026-11-04; baseline finish none → 2026-11-05 |
| 30 | **项目里程碑** |  |  |  |  |  | baseline start none → 2026-09-03; baseline finish none → 2026-11-06 |
| 31 | 需求规格说明书定稿 |  |  |  |  |  | resources 蔡俊杰 → 蔡俊杰 [25%]; baseline start none → 2026-09-18; baseline finish none → 2026-09-18 |
| 32 | 系统核心闭环完成 |  |  |  |  |  | resources 蔡俊杰 → 蔡俊杰 [25%]; baseline start none → 2026-09-24; baseline finish none → 2026-09-24 |
| 33 | 数据治理与模型重训完成 |  |  |  |  |  | resources 蔡俊杰 → 蔡俊杰 [25%]; baseline start none → 2026-10-09; baseline finish none → 2026-10-09 |
| 34 | 智能体与远距离识别完成 |  |  |  |  |  | resources 蔡俊杰 → 蔡俊杰 [25%]; baseline start none → 2026-10-26; baseline finish none → 2026-10-26 |
| 35 | 项目结项演示 |  |  |  |  |  | resources 全员 → 蔡俊杰 [25%]; 李汶航 [25%]; 欧阳宇康 [25%]; 陈泽恩 [25%]; baseline start none → 2026-11-06; baseline finish none → 2026-11-06 |

## Version 4 (data date 2026-09-24, saved 2026-09-24, file 项目任务分解.mpp)

Note of the change: fix(实验5): 清除残留的空白资源、任务8改为四人协作、修正质量模板来源说明 - 蔡俊杰

Last finish stays 2026-11-06. Complete tasks 22 → 11.

Changed:

| ID | Task | Start | Finish | Duration | Complete | Total float |
| --- | --- | --- | --- | --- | --- | --- |
| 13 | **数据与模型** |  | 2026-10-16 A → 2026-10-08 (-8d) | 29d? → 23d? | 100% → 38% | none → 0d |
| 16 | 数据清洗与防泄漏重划分 | 2026-09-21 A → 2026-09-11 (-10d) | 2026-09-28 A → 2026-09-16 (-12d) | 7d → 4d | 100% → 0% |  |
| 17 | 烟雾与远距离类数据集补充 | 2026-09-24 A → 2026-09-17 A (-7d) | 2026-10-08 A → 2026-09-30 (-8d) | 12d → 11d | 100% → 30% |  |
| 18 | 数据重训与现有模型对比评测 | 2026-10-09 A → 2026-10-02 (-7d) | 2026-10-16 A → 2026-10-08 (-8d) | 7d → 5d | 100% → 0% |  |
| 19 | **智能体与远距离识别** | 2026-10-19 A → 2026-10-09 (-10d) | 2026-11-02 A → 2026-10-23 (-10d) |  | 100% → 0% | none → 0d |
| 20 | 切片推理与多尺度检测 | 2026-10-19 A → 2026-10-09 (-10d) | 2026-10-23 A → 2026-10-15 (-8d) | 6d → 5d | 100% → 0% |  |
| 21 | 智能体复核 | 2026-10-26 A → 2026-10-16 (-10d) | 2026-10-29 A → 2026-10-22 (-7d) |  | 100% → 0% |  |
| 22 | 远景测试与误报评估 | 2026-10-29 A → 2026-10-19 (-10d) | 2026-11-02 A → 2026-10-23 (-10d) | 4d → 5d | 100% → 0% |  |
| 23 | **测试与验收** | 2026-09-23 A → 2026-09-24 (+1d) | 2026-11-02 A → 2026-10-28 (-5d) | 29d → 25d | 100% → 0% | none → 0d |
| 24 | 功能测试与缺陷记录 | 2026-09-23 A → 2026-09-24 (+1d) | 2026-09-25 A → 2026-09-25 | 4d → 2d | 100% → 0% |  |
| 25 | 缺陷修复与回归测试 | 2026-09-29 A → 2026-09-28 (-1d) | 2026-10-09 A → 2026-09-30 (-9d) | 10d → 3d | 100% → 0% |  |
| 26 | 误报与可靠性测试 | 2026-10-28 A → 2026-10-26 (-2d) | 2026-11-02 A → 2026-10-28 (-5d) | 5d → 3d | 100% → 0% |  |
| 27 | **演示与结项** | 2026-10-30 A → 2026-10-29 (-1d) | 2026-11-05 A → 2026-11-05 | 5d → 6d | 100% → 0% | none → 0d |
| 28 | 手机推流实测与演示 | 2026-10-30 A → 2026-10-29 (-1d) | 2026-11-03 A → 2026-11-02 (-1d) | 4d → 3d | 100% → 0% |  |
| 29 | 结项报告与材料归档 | 2026-11-03 A → 2026-11-04 (+1d) | 2026-11-05 A → 2026-11-05 | 4d → 2d | 100% → 0% |  |

## Version 5 (data date 2026-11-05, saved 2026-10-12, file 项目任务分解_全周期预设.mpp)

Note of the change: fix(experiment5/6): 删除两个工程文件里残留的空资源（全员、29）

Last finish stays 2026-11-06. Complete tasks 11 → 22.

Changed:

| ID | Task | Start | Finish | Duration | Complete | Total float |
| --- | --- | --- | --- | --- | --- | --- |
| 13 | **数据与模型** |  | 2026-10-08 → 2026-10-16 A (+8d) | 23d? → 29d? | 38% → 100% | 0d → none |
| 16 | 数据清洗与防泄漏重划分 | 2026-09-11 → 2026-09-21 A (+10d) | 2026-09-16 → 2026-09-28 A (+12d) | 4d → 7d | 0% → 100% |  |
| 17 | 烟雾与远距离类数据集补充 | 2026-09-17 A → 2026-09-24 A (+7d) | 2026-09-30 → 2026-10-08 A (+8d) | 11d → 12d | 30% → 100% |  |
| 18 | 数据重训与现有模型对比评测 | 2026-10-02 → 2026-10-09 A (+7d) | 2026-10-08 → 2026-10-16 A (+8d) | 5d → 7d | 0% → 100% |  |
| 19 | **智能体与远距离识别** | 2026-10-09 → 2026-10-19 A (+10d) | 2026-10-23 → 2026-11-02 A (+10d) |  | 0% → 100% | 0d → none |
| 20 | 切片推理与多尺度检测 | 2026-10-09 → 2026-10-19 A (+10d) | 2026-10-15 → 2026-10-23 A (+8d) | 5d → 6d | 0% → 100% |  |
| 21 | 智能体复核 | 2026-10-16 → 2026-10-26 A (+10d) | 2026-10-22 → 2026-10-29 A (+7d) |  | 0% → 100% |  |
| 22 | 远景测试与误报评估 | 2026-10-19 → 2026-10-29 A (+10d) | 2026-10-23 → 2026-11-02 A (+10d) | 5d → 4d | 0% → 100% |  |
| 23 | **测试与验收** | 2026-09-24 → 2026-09-23 A (-1d) | 2026-10-28 → 2026-11-02 A (+5d) | 25d → 29d | 0% → 100% | 0d → none |
| 24 | 功能测试与缺陷记录 | 2026-09-24 → 2026-09-23 A (-1d) | 2026-09-25 A | 2d → 4d | 0% → 100% |  |
| 25 | 缺陷修复与回归测试 | 2026-09-28 → 2026-09-29 A (+1d) | 2026-09-30 → 2026-10-09 A (+9d) | 3d → 10d | 0% → 100% |  |
| 26 | 误报与可靠性测试 | 2026-10-26 → 2026-10-28 A (+2d) | 2026-10-28 → 2026-11-02 A (+5d) | 3d → 5d | 0% → 100% |  |
| 27 | **演示与结项** | 2026-10-29 → 2026-10-30 A (+1d) | 2026-11-05 A | 6d → 5d | 0% → 100% | 0d → none |
| 28 | 手机推流实测与演示 | 2026-10-29 → 2026-10-30 A (+1d) | 2026-11-02 → 2026-11-03 A (+1d) | 3d → 4d | 0% → 100% |  |
| 29 | 结项报告与材料归档 | 2026-11-04 → 2026-11-03 A (-1d) | 2026-11-05 A | 2d → 4d | 0% → 100% |  |

## Version 6 (data date 2026-09-24, saved 2026-10-12, file 项目任务分解.mpp)

Note of the change: fix(experiment5/6): 删除两个工程文件里残留的空资源（全员、29）

Last finish stays 2026-11-06. Complete tasks 22 → 11.

Changed:

| ID | Task | Start | Finish | Duration | Complete | Total float |
| --- | --- | --- | --- | --- | --- | --- |
| 13 | **数据与模型** |  | 2026-10-16 A → 2026-10-08 (-8d) | 29d? → 23d? | 100% → 38% | none → 0d |
| 16 | 数据清洗与防泄漏重划分 | 2026-09-21 A → 2026-09-11 (-10d) | 2026-09-28 A → 2026-09-16 (-12d) | 7d → 4d | 100% → 0% |  |
| 17 | 烟雾与远距离类数据集补充 | 2026-09-24 A → 2026-09-17 A (-7d) | 2026-10-08 A → 2026-09-30 (-8d) | 12d → 11d | 100% → 30% |  |
| 18 | 数据重训与现有模型对比评测 | 2026-10-09 A → 2026-10-02 (-7d) | 2026-10-16 A → 2026-10-08 (-8d) | 7d → 5d | 100% → 0% |  |
| 19 | **智能体与远距离识别** | 2026-10-19 A → 2026-10-09 (-10d) | 2026-11-02 A → 2026-10-23 (-10d) |  | 100% → 0% | none → 0d |
| 20 | 切片推理与多尺度检测 | 2026-10-19 A → 2026-10-09 (-10d) | 2026-10-23 A → 2026-10-15 (-8d) | 6d → 5d | 100% → 0% |  |
| 21 | 智能体复核 | 2026-10-26 A → 2026-10-16 (-10d) | 2026-10-29 A → 2026-10-22 (-7d) |  | 100% → 0% |  |
| 22 | 远景测试与误报评估 | 2026-10-29 A → 2026-10-19 (-10d) | 2026-11-02 A → 2026-10-23 (-10d) | 4d → 5d | 100% → 0% |  |
| 23 | **测试与验收** | 2026-09-23 A → 2026-09-24 (+1d) | 2026-11-02 A → 2026-10-28 (-5d) | 29d → 25d | 100% → 0% | none → 0d |
| 24 | 功能测试与缺陷记录 | 2026-09-23 A → 2026-09-24 (+1d) | 2026-09-25 A → 2026-09-25 | 4d → 2d | 100% → 0% |  |
| 25 | 缺陷修复与回归测试 | 2026-09-29 A → 2026-09-28 (-1d) | 2026-10-09 A → 2026-09-30 (-9d) | 10d → 3d | 100% → 0% |  |
| 26 | 误报与可靠性测试 | 2026-10-28 A → 2026-10-26 (-2d) | 2026-11-02 A → 2026-10-28 (-5d) | 5d → 3d | 100% → 0% |  |
| 27 | **演示与结项** | 2026-10-30 A → 2026-10-29 (-1d) | 2026-11-05 A → 2026-11-05 | 5d → 6d | 100% → 0% | none → 0d |
| 28 | 手机推流实测与演示 | 2026-10-30 A → 2026-10-29 (-1d) | 2026-11-03 A → 2026-11-02 (-1d) | 4d → 3d | 100% → 0% |  |
| 29 | 结项报告与材料归档 | 2026-11-03 A → 2026-11-04 (+1d) | 2026-11-05 A → 2026-11-05 | 4d → 2d | 100% → 0% |  |
